# NCICBSecurityService_phase3

Schedule from MS Project, 2005-04-01 to 2006-01-16, A marks actual dates.
Home

## Calendars

- Standard: Mon-Fri 08:00-12:00, 13:00-17:00; Sat-Sun off.

## Resources

| Resource |
| --- |
| Vinay |
| Resource 1 |
| Brian |
| Kalpesh |
| Kunal |
| Eric |
| Charles |
| Team |
| Steve |
| JJ |
| Kunal Eric |
| Viany |
| New |
| XYZ |

## Schedule

| ID | WBS | Task | Duration | Start | Finish | Predecessors | Complete | Remaining | Total slack | Free slack | Constraint | Resources | Work | Actual work |
| --- | --- | --- | --- | --- | --- | --- | --- | --- | --- | --- | --- | --- | --- | --- |
| 1 | 1 | **Security Module (Release four)** | 207d? | 2005-04-01 A | 2006-01-16 |  | 6% | 195.61d? | 2d |  |  |  | 7029.44h | 706.96h |
| 2 | 1.1 | Application Integration and Support | 174d? | 2005-04-01 | 2005-11-30 |  |  |  | 21d |  | start no earlier than 2005-04-01 | Kunal [25%]; Vinay [5%] | 348.4h |  |
| 3 | 1.2 | **Inception** | 34d? | 2005-04-01 A | 2005-05-18 |  | 60% | 13.67d? | 173d |  |  |  | 803.6h | 516h |
| 4 | 1.2.1 | Phase 3 Evaluation | 5.25d | 2005-04-04 A | 2005-04-11 |  | 67% | 1.75d | 200.75d |  | start no earlier than 2004-08-02 | Vinay; Kunal | 56h | 28h |
| 5 | 1.2.2 | RI Fixing | 3d | 2005-04-11 A | 2005-04-14 A | 4 | 100% |  |  |  |  | Kunal; Brian | 48h | 48h |
| 6 | 1.2.3 | RI documentation | 7d | 2005-04-01 A | 2005-04-11 A |  | 100% |  |  |  | finish no earlier than 2005-04-11 | Kunal; Eric | 112h | 112h |
| 7 | 1.2.4 | Ri Testing and release | 4d | 2005-04-12 A | 2005-04-15 A | 6 | 100% |  |  |  | finish no earlier than 2005-04-15 | Kunal; Eric; Vinay | 96h | 96h |
| 8 | 1.2.5 | caBIG Annual Meeting | 2d | 2005-04-12 A | 2005-04-13 A | 7 | 100% |  |  |  |  | Vinay; Eric; Kunal; Kalpesh | 64h | 64h |
| 9 | 1.2.6 | Research & Analysis | 5d | 2005-04-14 | 2005-04-20 | 8 |  |  | 193d |  |  | Vinay; Kunal | 80h |  |
| 10 | 1.2.7 | CM configuration | 2d | 2005-04-21 A | 2005-04-22 A | 9 | 100% |  |  |  | start no earlier than 2005-04-20 | Eric; Kunal | 32h | 32h |
| 11 | 1.2.8 | Overall Scope and Vision Document | 5d | 2005-04-11 A | 2005-04-21 A |  | 100% |  |  |  | finish no earlier than 2005-04-21 | Vinay; Eric; Kunal | 104h | 104h |
| 12 | 1.2.9 | SDK Research & Analysis | 2d | 2005-04-26 A | 2005-04-27 A |  | 100% |  |  |  | start no earlier than 2005-04-26 | Vinay | 16h | 16h |
| 13 | 1.2.10 | SDK Scope/Vision Document | 2d | 2005-04-27 A | 2005-04-28 A | 12FS-1d | 100% |  |  |  | start no earlier than 2005-04-27 | Vinay | 16h | 16h |
| 14 | 1.2.11 | Scope Vision Review & Discussion | 1d | 2005-04-29 | 2005-04-29 | 13 |  |  | 2.75d | 0d |  |  |  |  |
| 15 | 1.2.12 | Supplentary Specifications | 3d | 2005-05-04 | 2005-05-06 | 25 |  |  | 173d | 0d | start no earlier than 2004-09-01 | Vinay; Kunal [15%] | 27.6h |  |
| 16 | 1.2.13 | Review Supplementart Specs | 1d | 2005-05-09 | 2005-05-09 | 15 |  |  | 180d |  |  | Eric | 8h |  |
| 17 | 1.2.14 | SWG Meeting | 0.75d? | 2005-05-05 | 2005-05-05 |  |  |  | 182.25d |  | start no earlier than 2005-05-05 | Vinay; Kunal; Eric; Charles | 24h |  |
| 18 | 1.2.15 | Fuctional Specifications | 7d | 2005-05-09 | 2005-05-17 | 15 |  |  | 173d | 0d |  | Vinay; Kunal | 112h |  |
| 19 | 1.2.16 | Identify Risk List | 0.5d | 2005-05-17 | 2005-05-18 | 18 |  |  | 173d | 0d |  | Charles; Vinay | 4h |  |
| 20 | 1.2.17 | Update Detail task plan | 0.5d | 2005-05-18 | 2005-05-18 | 19 |  |  | 173d |  | start no earlier than 2005-04-11 | Vinay; Charles | 4h |  |
| 21 | 1.3 | **3.0.1 Release** | 45d | 2005-04-25 A | 2005-06-24 |  | 16% | 37.77d | 0d |  |  |  | 960.8h | 190.96h |
| 22 | 1.3.1 | Scope Document | 3d | 2005-04-25 A | 2005-04-27 A |  | 100% |  |  |  | start no earlier than 2005-04-22 | Vinay; Kunal | 48h | 48h |
| 23 | 1.3.2 | **Iteration I** | 16d | 2005-04-28 A | 2005-05-19 | 22 | 37% | 10.04d | 1d | 0d |  |  | 390.4h | 138.96h |
| 24 | 1.3.2.1 | **API Changes & Bug Fixes** | 9d | 2005-05-02 A | 2005-05-12 |  | 29% | 6.42d | 1d | 0d |  |  | 102.4h | 28.56h |
| 25 | 1.3.2.1.1 | Modify API for Negative Privileges | 2d | 2005-05-02 A | 2005-05-03 A | 14 | 100% |  |  |  | start no earlier than 2005-05-02 | Vinay [10%]; Kunal | 17.6h | 17.6h |
| 26 | 1.3.2.1.2 | Modify API for Primitive Data Types | 2d | 2005-05-03 A | 2005-05-04 | 25FS-1d | 5% | 1.9d | 7d |  |  | Vinay [10%]; Kunal | 17.6h | 0.88h |
| 27 | 1.3.2.1.3 | Cross Database Compatibility | 7d | 2005-05-04 A | 2005-05-12 | 25 | 15% | 5.95d | 1d |  |  | Vinay [20%]; Kunal | 67.2h | 10.08h |

| ID | WBS | Task | Duration | Start | Finish | Predecessors | Complete | Remaining | Total slack | Free slack | Constraint | Resources | Work | Actual work |
| --- | --- | --- | --- | --- | --- | --- | --- | --- | --- | --- | --- | --- | --- | --- |
| 28 | 1.3.2.2 | **UPT Changes & Bug Fixes** | 10d | 2005-04-28 A | 2005-05-11 |  | 60% | 4d | 2d | 1d |  |  | 200h | 110.4h |
| 29 | 1.3.2.2.1 | UI Bug Fixes | 3d | 2005-04-28 A | 2005-05-02 A | 22 | 100% |  |  |  |  | Eric | 24h | 24h |
| 30 | 1.3.2.2.2 | Modify Association Screen | 4d | 2005-05-02 A | 2005-05-05 A | 29FS-1d | 100% |  |  |  |  | Kunal; Eric | 64h | 64h |
| 31 | 1.3.2.2.3 | Cross Browser Compatibility | 7d | 2005-05-03 A | 2005-05-11 | 29 | 20% | 5.6d | 2d |  |  | Eric; Kunal | 112h | 22.4h |
| 32 | 1.3.2.3 | Integration Test - API and UPT Changes | 3d | 2005-05-13 | 2005-05-17 | 24, 28 |  |  | 1d | 0d |  | Kunal; Eric | 48h |  |
| 33 | 1.3.2.4 | Bug Fix | 1d | 2005-05-17 | 2005-05-17 | 24, 28 |  |  | 3d |  | finish no earlier than 2005-05-17 | Kunal; Eric | 16h |  |
| 34 | 1.3.2.5 | Test on QA | 1d | 2005-05-18 | 2005-05-18 | 32 |  |  | 1d | 0d |  | Eric; Kunal | 16h |  |
| 35 | 1.3.2.6 | Release for FCCC only UPT.war | 1d | 2005-05-19 | 2005-05-19 | 34 |  |  | 1d |  |  | Kunal | 8h |  |
| 36 | 1.3.3 | **Iteration II** | 42d | 2005-04-28 A | 2005-06-24 |  | 3% | 40.78d | 0d |  |  |  | 522.4h | 4h |
| 37 | 1.3.3.1 | **Open Source Initiative** | 23d | 2005-04-28 A | 2005-05-30 |  | 11% | 20.58d | 19d |  |  |  | 38h | 4h |
| 38 | 1.3.3.1.1 | Modify nightly build script | 4d | 2005-04-28 A | 2005-05-03 | 22 | 50% | 2d | 23d | 4d |  | Brian [25%] | 8h | 4h |
| 39 | 1.3.3.1.2 | Clean up Code base | 10d | 2005-05-10 | 2005-05-23 | 38 |  |  | 19d | 0d | start no earlier than 2005-05-10 | Brian [25%] | 20h |  |
| 40 | 1.3.3.1.3 | Update Junit Test cases | 5d | 2005-05-24 | 2005-05-30 | 39 |  |  | 19d |  |  | Brian [25%] | 10h |  |
| 41 | 1.3.3.2 | **API Changes & Bug Fixes** | 11d | 2005-05-20 | 2005-06-03 |  |  |  | 1d |  |  |  | 116.4h |  |
| 42 | 1.3.3.2.1 | Standardize Privileges | 1d | 2005-05-23 | 2005-05-23 | 23 |  |  | 24d |  | start no earlier than 2005-05-20 | Vinay [25%] | 2h |  |
| 43 | 1.3.3.2.2 | Configurable Queries | 4d | 2005-05-20 | 2005-05-25 | 23 |  |  | 22d |  |  | XYZ | 32h |  |
| 44 | 1.3.3.2.3 | **Provide new Methods for Reporting & Changes for Caching** | 11d | 2005-05-20 | 2005-06-03 | 23 |  |  | 0d |  |  |  | 82.4h |  |
| 45 | 1.3.3.2.3.1 | Design | 4d | 2005-05-20 | 2005-05-25 |  |  |  | 0d |  |  | Kunal; Vinay [10%] | 26.4h |  |
| 46 | 1.3.3.2.3.2 | Implementation | 7d | 2005-05-26 | 2005-06-03 | 45 |  |  | 0d |  |  | XYZ | 56h |  |
| 47 | 1.3.3.3 | **UPT Changes & Bug Fixes** | 13d | 2005-05-26 | 2005-06-13 |  |  |  | 4d |  |  |  | 64h |  |
| 48 | 1.3.3.3.1 | Modify UPT for Standard Privileges | 2d | 2005-05-26 | 2005-05-27 | 45 |  |  | 15d | 0d |  | Kunal | 16h |  |
| 49 | 1.3.3.3.2 | Provide Reporting Functionality | 6d | 2005-06-06 | 2005-06-13 | 44 |  |  | 0d |  |  | XYZ | 48h |  |
| 50 | 1.3.3.4 | **RI Changes & Bug Fixes** | 3d | 2005-05-30 | 2005-06-01 |  |  |  | 15d |  |  |  | 24h |  |
| 51 | 1.3.3.4.1 | Modify RI to use new APIs | 3d | 2005-05-30 | 2005-06-01 | 48 |  |  | 15d | 0d |  | Kunal | 24h |  |

| ID | WBS | Task | Type | Duration | Start | Finish | Predecessors | Total slack | Free slack | Constraint | Resources | Work |
| --- | --- | --- | --- | --- | --- | --- | --- | --- | --- | --- | --- | --- |
| 52 | 1.3.3.5 | **Update Documentations** |  | 10d | 2005-06-02 | 2005-06-15 |  | 7d |  |  |  | 48h |
| 53 | 1.3.3.5.1 | RI Guide |  | 2d | 2005-06-02 | 2005-06-03 | 51 | 15d |  | start no earlier than 2005-06-02 | Kunal | 16h |
| 54 | 1.3.3.5.2 | UPT Guide Changes |  | 2d | 2005-06-14 | 2005-06-15 | 49 | 7d |  |  | XYZ | 16h |
| 55 | 1.3.3.5.3 | Developers Guide |  | 2d | 2005-06-06 | 2005-06-07 | 46, 57 | 13d |  |  | Eric | 16h |
| 56 | 1.3.3.6 | **Testing** |  | 25d | 2005-05-20 | 2005-06-23 |  | 1d |  |  |  | 224h |
| 57 | 1.3.3.6.1 | Developing Test Cases |  | 4d | 2005-05-20 | 2005-05-25 | 23 | 20d | 7d |  | Eric | 32h |
| 58 | 1.3.3.6.2 | Integration Test - API and UPT Changes |  | 4d | 2005-06-14 | 2005-06-17 | 49 | 0d |  |  | Eric | 32h |
| 59 | 1.3.3.6.3 | Bug Fix |  | 4d | 2005-06-14 | 2005-06-17 | 49 | 5d |  | finish no earlier than 2005-05-17 | Kunal; XYZ | 64h |
| 60 | 1.3.3.6.4 | Test on QA |  | 2d | 2005-06-20 | 2005-06-21 | 58 | 0d |  |  | Eric; Kunal; XYZ | 48h |
| 61 | 1.3.3.6.5 | Stage Testing |  | 2d | 2005-06-22 | 2005-06-23 | 60 | 0d |  |  | Kunal; XYZ; Eric | 48h |
| 62 | 1.3.3.7 | Releasing and Baselining |  | 1d | 2005-06-24 | 2005-06-24 | 61 | 0d |  |  | Kunal | 8h |
| 63 | 1.3.3.8 | Identify & Publish Requirements for out sourced components | milestone | 0d | 2005-06-24 | 2005-06-24 | 62 | 0d |  |  |  |  |
| 64 | 1.4 | SDK Release |  | 34d | 2005-05-02 | 2005-06-21 | 14 | 123d |  |  | Vinay [75%] | 204h |
| 65 | 1.5 | **Elaboration** |  | 20d | 2005-06-27 | 2005-07-22 | 21 | 0d |  |  |  | 815.04h |
| 66 | 1.5.1 | **Iteration I** |  | 20d | 2005-06-27 | 2005-07-22 |  | 0d |  |  |  | 464h |
| 67 | 1.5.1.1 | Detailed Iteration Release Plan |  | 1d | 2005-06-27 | 2005-06-27 |  | 18d | 0d | start no earlier than 2005-05-17 | Vinay | 8h |
| 68 | 1.5.1.2 | Research Prototype Development |  | 20d | 2005-06-27 | 2005-07-22 |  | 0d |  | start no earlier than 2005-04-26 | XYZ; Kunal | 320h |
| 69 | 1.5.1.3 | Level 1 - 2 Use Cases |  | 5d | 2005-06-27 | 2005-07-01 |  | 15d |  | start no earlier than 2005-05-17 | Vinay; Eric | 80h |
| 70 | 1.5.1.4 | Peer Review of Use Cases |  | 1d | 2005-06-27 | 2005-06-27 |  | 19d |  | start no earlier than 2005-05-24 | Eric | 8h |
| 71 | 1.5.1.5 | Risk List Priority |  | 1d | 2005-06-28 | 2005-06-28 | 67 | 18d |  |  | Vinay | 8h |
| 72 | 1.5.1.6 | **Finalize Requirements** |  | 2d | 2005-06-27 | 2005-06-28 |  | 0.44d |  |  |  | 40h |
| 73 | 1.5.1.6.1 | User Working Group Review |  | 1d | 2005-06-27 | 2005-06-27 |  | 0.44d | 0d | start no earlier than 2005-05-26 | XYZ; Vinay; Kunal; Eric; Charles | 40h |
| 74 | 1.5.1.6.2 | Stakeholder Sign Off |  | 1d | 2005-06-28 | 2005-06-28 | 73 | 0.44d | 0d | start no earlier than 2004-10-01 |  |  |
| 75 | 1.5.2 | **Iteration II** |  | 18.56d | 2005-06-27 | 2005-07-21 |  | 0.44d | 0d |  |  | 335.04h |
| 76 | 1.5.2.1 | Develop Architecture Prototype / Framework |  | 6d | 2005-06-29 | 2005-07-06 | 74 | 0.44d | 0d | finish no earlier than 2005-06-03 | Vinay; Kunal; XYZ | 144h |
| 77 | 1.5.2.2 | Software Architecture Document |  | 8d | 2005-07-07 | 2005-07-20 | 76 | 0.44d | 0d | start no earlier than 2005-06-02 | Vinay; Kunal; Eric; XYZ | 151.04h |
| 78 | 1.5.2.3 | Architecture Peer Review |  | 1d | 2005-06-27 | 2005-06-27 |  | 18d |  | start no earlier than 2005-06-07 | Kunal; Vinay; Eric; XYZ | 32h |
| 79 | 1.5.2.4 | Prioritize Risk List |  | 1d | 2005-07-20 | 2005-07-21 | 77 | 0.44d |  | start no earlier than 2004-10-26 | Vinay | 8h |
| 80 | 1.5.3 | Phase Review |  | 1d | 2005-07-21 | 2005-07-22 | 75 | 0.44d |  |  | Eric; Charles | 16h |

Notes:
- 74: An email was sent out to the group and no one responded. Hence this task has been marked as 100%

| ID | WBS | Task | Type | Duration | Start | Finish | Predecessors | Total slack | Free slack | Constraint | Resources | Work |
| --- | --- | --- | --- | --- | --- | --- | --- | --- | --- | --- | --- | --- |
| 81 | 1.6 | **Construction** |  | 103d | 2005-07-25 | 2005-12-14 | 65 | 0d |  |  |  | 3240h |
| 82 | 1.6.1 | **Iteration - SSO** |  | 56d | 2005-07-25 | 2005-10-10 |  | 0d |  |  |  | 560h |
| 83 | 1.6.1.1 | Detailed Iteration Plan |  | 1d | 2005-07-25 | 2005-07-25 | 65 | 0d |  | start no earlier than 2004-10-26 | Vinay | 8h |
| 84 | 1.6.1.2 | **Design** |  | 9d | 2005-07-26 | 2005-08-05 |  | 0d |  |  |  | 120h |
| 85 | 1.6.1.2.1 | Level 3 - 4 Use Cases |  | 3d | 2005-07-26 | 2005-07-28 | 83 | 0d |  | start no earlier than 2004-10-27 | Vinay | 24h |
| 86 | 1.6.1.2.2 | Use Case Model |  | 1d | 2005-07-29 | 2005-07-29 | 85 | 0d |  | start no earlier than 2004-10-27 | Vinay | 8h |
| 87 | 1.6.1.2.3 | UML Sequence Diagram |  | 1d | 2005-08-01 | 2005-08-01 | 86 | 122d |  |  | Vinay | 8h |
| 88 | 1.6.1.2.4 | UML Activity Diagram |  | 1d | 2005-08-01 | 2005-08-01 | 86 | 0d |  | start no earlier than 2004-10-29 | Vinay | 8h |
| 89 | 1.6.1.2.5 | UML Class Diagram |  | 3d | 2005-08-02 | 2005-08-04 | 88 | 0d |  |  | Vinay | 24h |
| 90 | 1.6.1.2.6 | Design Review |  | 1d | 2005-08-05 | 2005-08-05 | 89 | 0d |  |  | Charles | 8h |
| 91 | 1.6.1.2.7 | Test Case Development |  | 5d | 2005-08-01 | 2005-08-05 | 86 | 118d |  |  | Eric | 40h |
| 92 | 1.6.1.3 | **Implementation** |  | 41d | 2005-08-08 | 2005-10-03 |  | 72d | 0d |  |  | 344h |
| 93 | 1.6.1.3.1 | Environment Setup |  | 4d | 2005-08-08 | 2005-08-11 | 90, 111 | 72d | 0d | start no earlier than 2004-11-01 | Kunal | 32h |
| 94 | 1.6.1.3.2 | Junit Test Development |  | 4d | 2005-08-12 | 2005-08-17 | 93 | 72d | 0d | start no earlier than 2005-07-15 | Kunal | 32h |
| 95 | 1.6.1.3.3 | Code Development + Unit Testing |  | 33d | 2005-08-18 | 2005-10-03 | 94 | 72d | 0d | start no earlier than 2004-11-08 | Kunal | 264h |
| 96 | 1.6.1.3.4 | Code Reviews |  | 2d | 2005-09-30 | 2005-10-03 | 95FS-2d | 72d | 0d | finish no earlier than 2004-11-15 | Charles | 16h |
| 97 | 1.6.1.3.5 | Promote to QA | milestone | 0d | 2005-10-03 | 2005-10-03 | 96 | 72d |  |  |  |  |
| 98 | 1.6.1.4 | **Integration Testing** |  | 5d | 2005-10-04 | 2005-10-10 |  | 72d | 0d |  |  | 88h |
| 99 | 1.6.1.4.1 | QA Testing |  | 4d | 2005-10-04 | 2005-10-07 | 92 | 73d |  |  | Eric | 32h |
| 100 | 1.6.1.4.2 | Bug Fixes |  | 4d | 2005-10-04 | 2005-10-07 | 92 | 72d | 0d |  | Kunal | 32h |
| 101 | 1.6.1.4.3 | Evaluate Results & Consolidate Documents/ Design |  | 1d | 2005-10-10 | 2005-10-10 | 100 | 72d |  | start no earlier than 2004-11-16 | Eric; Vinay; Kunal | 24h |
| 102 | 1.6.1.5 | Iteration Complete | milestone | 0d | 2005-10-10 | 2005-10-10 | 98 | 72d |  | start no earlier than 2005-08-05 |  |  |
| 103 | 1.6.2 | **Iteration - Auth Policy Caching** |  | 45d | 2005-07-25 | 2005-09-23 |  | 18d |  |  |  | 352h |
| 104 | 1.6.2.1 | Detailed Iteration Plan |  | 1d | 2005-07-25 | 2005-07-25 | 65 | 18d | 0d | start no earlier than 2004-10-26 | Kunal | 8h |

| ID | WBS | Task | Type | Duration | Start | Finish | Predecessors | Total slack | Free slack | Constraint | Resources | Work |
| --- | --- | --- | --- | --- | --- | --- | --- | --- | --- | --- | --- | --- |
| 105 | 1.6.2.2 | **Design** |  | 9d | 2005-07-26 | 2005-08-05 |  | 18d |  |  |  | 120h |
| 106 | 1.6.2.2.1 | Level 3 - 4 Use Cases |  | 3d | 2005-07-26 | 2005-07-28 | 104 | 18d | 0d | start no earlier than 2004-10-27 | Kunal | 24h |
| 107 | 1.6.2.2.2 | Use Case Model |  | 1d | 2005-07-29 | 2005-07-29 | 106 | 18d | 0d | start no earlier than 2004-10-27 | Kunal | 8h |
| 108 | 1.6.2.2.3 | UML Sequence Diagram |  | 1d | 2005-08-01 | 2005-08-01 | 107 | 64d | 18d |  | Kunal | 8h |
| 109 | 1.6.2.2.4 | UML Activity Diagram |  | 1d | 2005-08-01 | 2005-08-01 | 107 | 39d | 0d | start no earlier than 2004-10-29 | Kunal | 8h |
| 110 | 1.6.2.2.5 | UML Class Diagram |  | 3d | 2005-08-02 | 2005-08-04 | 109 | 39d | 0d |  | Kunal | 24h |
| 111 | 1.6.2.2.6 | Design Review |  | 1d | 2005-08-05 | 2005-08-05 | 110 | 39d | 0d |  | Charles | 8h |
| 112 | 1.6.2.2.7 | Test Case Development |  | 5d | 2005-08-01 | 2005-08-05 | 107 | 81d |  |  | Eric | 40h |
| 113 | 1.6.2.3 | **Implementation** |  | 17d | 2005-08-26 | 2005-09-19 |  | 8d | 0d |  |  | 152h |
| 114 | 1.6.2.3.1 | Environment Setup |  | 2d | 2005-08-26 | 2005-08-29 | 108, 142 | 8d | 0d | start no earlier than 2004-11-01 | XYZ | 16h |
| 115 | 1.6.2.3.2 | Junit Test Development |  | 2d | 2005-08-30 | 2005-08-31 | 114 | 8d | 0d | start no earlier than 2005-07-15 | XYZ | 16h |
| 116 | 1.6.2.3.3 | Code Development + Unit Testing |  | 13d | 2005-09-01 | 2005-09-19 | 115 | 8d | 0d | start no earlier than 2004-11-08 | XYZ | 104h |
| 117 | 1.6.2.3.4 | Code Reviews |  | 2d | 2005-09-16 | 2005-09-19 | 116FS-2d | 8d | 0d | finish no earlier than 2004-11-15 | Charles | 16h |
| 118 | 1.6.2.3.5 | Promote to QA | milestone | 0d | 2005-09-19 | 2005-09-19 | 117 | 8d |  |  |  |  |
| 119 | 1.6.2.4 | **Integration Testing** |  | 4d | 2005-09-20 | 2005-09-23 |  | 8d | 0d |  |  | 72h |
| 120 | 1.6.2.4.1 | QA Testing |  | 3d | 2005-09-20 | 2005-09-22 | 113 | 47d |  |  | Eric | 24h |
| 121 | 1.6.2.4.2 | Bug Fixes |  | 3d | 2005-09-20 | 2005-09-22 | 113 | 8d | 0d |  | XYZ | 24h |
| 122 | 1.6.2.4.3 | Evaluate Results & Consolidate Documents/ Design |  | 1d | 2005-09-23 | 2005-09-23 | 121 | 46d |  | start no earlier than 2004-11-16 | Eric; Kunal; XYZ | 24h |
| 123 | 1.6.2.5 | Iteration Complete | milestone | 0d | 2005-09-23 | 2005-09-23 | 119 | 46d |  | start no earlier than 2005-08-05 |  |  |
| 124 | 1.6.3 | **Iteration - Authentication Web Service** |  | 25d | 2005-07-25 | 2005-08-26 |  | 8d |  |  |  | 328h |
| 125 | 1.6.3.1 | Detailed Iteration Plan |  | 1d | 2005-07-25 | 2005-07-25 | 65 | 8d | 0d | start no earlier than 2004-10-26 | XYZ | 8h |
| 126 | 1.6.3.2 | **Design** |  | 8d | 2005-07-26 | 2005-08-04 |  | 8d |  |  |  | 104h |
| 127 | 1.6.3.2.1 | Level 3 - 4 Use Cases |  | 2d | 2005-07-26 | 2005-07-27 | 125 | 8d | 0d | start no earlier than 2004-10-27 | XYZ | 16h |
| 128 | 1.6.3.2.2 | Use Case Model |  | 1d | 2005-07-28 | 2005-07-28 | 127 | 8d | 0d | start no earlier than 2004-10-27 | XYZ | 8h |
| 129 | 1.6.3.2.3 | UML Sequence Diagram |  | 1d | 2005-07-29 | 2005-07-29 | 128 | 8d | 0d |  | XYZ | 8h |
| 130 | 1.6.3.2.4 | UML Activity Diagram |  | 1d | 2005-07-29 | 2005-07-29 | 128 | 61d | 0d | start no earlier than 2004-10-29 | XYZ | 8h |
| 131 | 1.6.3.2.5 | UML Class Diagram |  | 2d | 2005-08-01 | 2005-08-02 | 130 | 61d | 0d |  | XYZ | 16h |
| 132 | 1.6.3.2.6 | Design Review |  | 1d | 2005-08-03 | 2005-08-03 | 131 | 61d |  |  | Charles | 8h |
| 133 | 1.6.3.2.7 | Test Case Development |  | 5d | 2005-07-29 | 2005-08-04 | 128 | 60d |  |  | Eric | 40h |

| ID | WBS | Task | Type | Duration | Start | Finish | Predecessors | Total slack | Free slack | Constraint | Resources | Work |
| --- | --- | --- | --- | --- | --- | --- | --- | --- | --- | --- | --- | --- |
| 134 | 1.6.3.3 | **Implementation** |  | 16d | 2005-08-01 | 2005-08-22 |  | 8d | 0d |  |  | 144h |
| 135 | 1.6.3.3.1 | Environment Setup |  | 2d | 2005-08-01 | 2005-08-02 | 129 | 8d | 0d | start no earlier than 2004-11-01 | XYZ | 16h |
| 136 | 1.6.3.3.2 | Junit Test Development |  | 2d | 2005-08-03 | 2005-08-04 | 135 | 8d | 0d | start no earlier than 2005-07-15 | XYZ | 16h |
| 137 | 1.6.3.3.3 | Code Development + Unit Testing |  | 12d | 2005-08-05 | 2005-08-22 | 136 | 8d | 0d | start no earlier than 2004-11-08 | XYZ | 96h |
| 138 | 1.6.3.3.4 | Code Reviews |  | 2d | 2005-08-19 | 2005-08-22 | 137FS-2d | 8d | 0d | finish no earlier than 2004-11-15 | Charles | 16h |
| 139 | 1.6.3.3.5 | Promote to QA | milestone | 0d | 2005-08-22 | 2005-08-22 | 138 | 8d |  |  |  |  |
| 140 | 1.6.3.4 | **Integration Testing** |  | 4d | 2005-08-23 | 2005-08-26 |  | 8d | 0d |  |  | 72h |
| 141 | 1.6.3.4.1 | QA Testing |  | 3d | 2005-08-23 | 2005-08-25 | 134 | 45d |  |  | Eric | 24h |
| 142 | 1.6.3.4.2 | Bug Fixes |  | 3d | 2005-08-23 | 2005-08-25 | 134 | 8d | 0d |  | XYZ | 24h |
| 143 | 1.6.3.4.3 | Evaluate Results & Consolidate Documents/ Design |  | 1d | 2005-08-26 | 2005-08-26 | 142 | 44d |  | start no earlier than 2004-11-16 | Eric; Vinay; Kunal | 24h |
| 144 | 1.6.3.5 | Iteration Complete | milestone | 0d | 2005-08-26 | 2005-08-26 | 140 | 44d |  | start no earlier than 2005-08-05 |  |  |
| 145 | 1.6.4 | **Iteration - Policy Adapters** |  | 41d | 2005-08-08 | 2005-10-03 |  | 0d |  |  |  | 464h |
| 146 | 1.6.4.1 | Detailed Iteration Plan |  | 2d | 2005-08-08 | 2005-08-09 | 90 | 0d |  | start no earlier than 2004-10-26 | Vinay | 16h |
| 147 | 1.6.4.2 | **Design** |  | 9d | 2005-08-10 | 2005-08-22 |  | 0d |  |  |  | 120h |
| 148 | 1.6.4.2.1 | Level 3 - 4 Use Cases |  | 3d | 2005-08-10 | 2005-08-12 | 146 | 0d |  | start no earlier than 2004-10-27 | Vinay | 24h |
| 149 | 1.6.4.2.2 | Use Case Model |  | 1d | 2005-08-15 | 2005-08-15 | 148 | 0d |  | start no earlier than 2004-10-27 | Vinay | 8h |
| 150 | 1.6.4.2.3 | UML Sequence Diagram |  | 1d | 2005-08-16 | 2005-08-16 | 149 | 0d |  |  | Vinay | 8h |
| 151 | 1.6.4.2.4 | UML Activity Diagram |  | 1d | 2005-08-16 | 2005-08-16 | 149 | 17d | 0d | start no earlier than 2004-10-29 | Vinay | 8h |
| 152 | 1.6.4.2.5 | UML Class Diagram |  | 3d | 2005-08-17 | 2005-08-19 | 151 | 17d | 0d |  | Vinay | 24h |
| 153 | 1.6.4.2.6 | Design Review |  | 1d | 2005-08-22 | 2005-08-22 | 152 | 17d | 0d |  | Charles | 8h |
| 154 | 1.6.4.2.7 | Test Case Development |  | 5d | 2005-08-16 | 2005-08-22 | 149 | 48d |  |  | Eric | 40h |
| 155 | 1.6.4.3 | **Implementation** |  | 29d | 2005-08-17 | 2005-09-26 |  | 0d |  |  |  | 248h |
| 156 | 1.6.4.3.1 | Environment Setup |  | 2d | 2005-08-17 | 2005-08-18 | 150 | 0d |  | start no earlier than 2004-11-01 | Vinay | 16h |
| 157 | 1.6.4.3.2 | Junit Test Development |  | 4d | 2005-08-19 | 2005-08-24 | 156 | 0d |  | start no earlier than 2005-07-15 | Vinay | 32h |
| 158 | 1.6.4.3.3 | Code Development + Unit Testing |  | 23d | 2005-08-25 | 2005-09-26 | 157 | 0d |  | start no earlier than 2004-11-08 | Vinay | 184h |
| 159 | 1.6.4.3.4 | Code Reviews |  | 2d | 2005-09-23 | 2005-09-26 | 158FS-2d | 0d |  | finish no earlier than 2004-11-15 | Charles | 16h |
| 160 | 1.6.4.3.5 | Promote to QA | milestone | 0d | 2005-09-26 | 2005-09-26 | 159 | 0d |  |  |  |  |

| ID | WBS | Task | Type | Duration | Start | Finish | Predecessors | Total slack | Free slack | Constraint | Resources | Work |
| --- | --- | --- | --- | --- | --- | --- | --- | --- | --- | --- | --- | --- |
| 161 | 1.6.4.4 | **Integration Testing** |  | 5d | 2005-09-27 | 2005-10-03 |  | 0d |  |  |  | 80h |
| 162 | 1.6.4.4.1 | QA Testing |  | 4d | 2005-09-27 | 2005-09-30 | 155 | 19d |  |  | Eric | 32h |
| 163 | 1.6.4.4.2 | Bug Fixes |  | 4d | 2005-09-27 | 2005-09-30 | 155 | 0d |  |  | Vinay | 32h |
| 164 | 1.6.4.4.3 | Evaluate Results & Consolidate Documents/ Design |  | 1d | 2005-10-03 | 2005-10-03 | 163 | 77d |  | start no earlier than 2004-11-16 | Eric; Vinay | 16h |
| 165 | 1.6.4.5 | Iteration Complete | milestone | 0d | 2005-10-03 | 2005-10-03 | 161 | 77d |  | start no earlier than 2005-08-05 |  |  |
| 166 | 1.6.5 | **Iteration - UPT Enhancements** |  | 51d | 2005-09-23 | 2005-12-02 |  | 8d |  |  |  | 576h |
| 167 | 1.6.5.1 | Detailed Iteration Plan |  | 1d | 2005-09-23 | 2005-09-23 | 121 | 8d | 0d | start no earlier than 2004-10-26 | XYZ | 8h |
| 168 | 1.6.5.2 | **Design** |  | 10d | 2005-09-26 | 2005-10-07 |  | 8d |  |  |  | 128h |
| 169 | 1.6.5.2.1 | Level 3 - 4 Use Cases |  | 3d | 2005-09-26 | 2005-09-28 | 167 | 8d | 0d | start no earlier than 2004-10-27 | XYZ | 24h |
| 170 | 1.6.5.2.2 | Use Case Model |  | 1d | 2005-09-29 | 2005-09-29 | 169 | 8d | 0d | start no earlier than 2004-10-27 | XYZ | 8h |
| 171 | 1.6.5.2.3 | UML Sequence Diagram |  | 1d | 2005-09-30 | 2005-09-30 | 170 | 8d | 0d |  | XYZ | 8h |
| 172 | 1.6.5.2.4 | UML Activity Diagram |  | 3d | 2005-09-30 | 2005-10-04 | 170 | 4d | 0d | start no earlier than 2004-10-29 | XYZ | 24h |
| 173 | 1.6.5.2.5 | UML Class Diagram |  | 2d | 2005-10-05 | 2005-10-06 | 172 | 4d | 0d |  | XYZ | 16h |
| 174 | 1.6.5.2.6 | Design Review |  | 1d | 2005-10-07 | 2005-10-07 | 173 | 4d | 0d |  | Charles | 8h |
| 175 | 1.6.5.2.7 | Test Case Development |  | 5d | 2005-09-30 | 2005-10-06 | 170 | 41d |  |  | Eric | 40h |
| 176 | 1.6.5.3 | **Implementation** |  | 38d | 2005-10-03 | 2005-11-23 |  | 8d | 0d |  |  | 320h |
| 177 | 1.6.5.3.1 | Environment Setup |  | 2d | 2005-10-03 | 2005-10-04 | 171 | 8d | 0d | start no earlier than 2004-11-01 | XYZ | 16h |
| 178 | 1.6.5.3.2 | Junit Test Development |  | 3d | 2005-10-05 | 2005-10-07 | 177 | 8d | 0d | start no earlier than 2005-07-15 | XYZ | 24h |
| 179 | 1.6.5.3.3 | Code Development + Unit Testing |  | 33d | 2005-10-10 | 2005-11-23 | 178 | 8d | 0d | start no earlier than 2004-11-08 | XYZ | 264h |
| 180 | 1.6.5.3.4 | Code Reviews |  | 2d | 2005-11-22 | 2005-11-23 | 179FS-2d | 8d | 0d | finish no earlier than 2004-11-15 | Charles | 16h |
| 181 | 1.6.5.3.5 | Promote to QA | milestone | 0d | 2005-11-23 | 2005-11-23 | 180 | 8d |  |  |  |  |
| 182 | 1.6.5.4 | **Integration Testing** |  | 7d | 2005-11-24 | 2005-12-02 |  | 8d | 0d |  |  | 120h |
| 183 | 1.6.5.4.1 | QA Testing |  | 6d | 2005-11-24 | 2005-12-01 | 176 | 9d |  |  | Eric | 48h |
| 184 | 1.6.5.4.2 | Bug Fixes |  | 6d | 2005-11-24 | 2005-12-01 | 176 | 8d | 0d |  | XYZ | 48h |
| 185 | 1.6.5.4.3 | Evaluate Results & Consolidate Documents/ Design |  | 1d | 2005-12-02 | 2005-12-02 | 184 | 8d |  | start no earlier than 2004-11-16 | Eric; XYZ; Kunal | 24h |
| 186 | 1.6.5.5 | Iteration Complete | milestone | 0d | 2005-12-02 | 2005-12-02 | 182 | 8d |  | start no earlier than 2005-08-05 |  |  |

| ID | WBS | Task | Type | Duration | Start | Finish | Predecessors | Total slack | Free slack | Constraint | Resources | Work |
| --- | --- | --- | --- | --- | --- | --- | --- | --- | --- | --- | --- | --- |
| 187 | 1.6.6 | **Iteration - AOP Integration** |  | 43d | 2005-10-17 | 2005-12-14 |  | 0d |  |  |  | 512h |
| 188 | 1.6.6.1 | Detailed Iteration Plan |  | 2d | 2005-10-17 | 2005-10-18 | 216 | 0d |  | start no earlier than 2004-10-26 | Vinay | 16h |
| 189 | 1.6.6.2 | **Design** |  | 10d | 2005-10-19 | 2005-11-01 |  | 0d |  |  |  | 128h |
| 190 | 1.6.6.2.1 | Level 3 - 4 Use Cases |  | 3d | 2005-10-19 | 2005-10-21 | 188 | 0d |  | start no earlier than 2004-10-27 | Vinay | 24h |
| 191 | 1.6.6.2.2 | Use Case Model |  | 1d | 2005-10-24 | 2005-10-24 | 190 | 0d |  | start no earlier than 2004-10-27 | Vinay | 8h |
| 192 | 1.6.6.2.3 | UML Sequence Diagram |  | 1d | 2005-10-25 | 2005-10-25 | 191 | 0d |  |  | Vinay | 8h |
| 193 | 1.6.6.2.4 | UML Activity Diagram |  | 1d | 2005-10-25 | 2005-10-25 | 191 | 56d | 0d | start no earlier than 2004-10-29 | Vinay | 8h |
| 194 | 1.6.6.2.5 | UML Class Diagram |  | 4d | 2005-10-26 | 2005-10-31 | 193 | 56d | 0d |  | Vinay | 32h |
| 195 | 1.6.6.2.6 | Design Review |  | 1d | 2005-11-01 | 2005-11-01 | 194 | 56d |  |  | Charles | 8h |
| 196 | 1.6.6.2.7 | Test Case Development |  | 5d | 2005-10-25 | 2005-10-31 | 191 | 57d |  |  | Eric | 40h |
| 197 | 1.6.6.3 | **Implementation** |  | 29d | 2005-10-26 | 2005-12-05 |  | 0d |  |  |  | 248h |
| 198 | 1.6.6.3.1 | Environment Setup |  | 2d | 2005-10-26 | 2005-10-27 | 192 | 0d |  | start no earlier than 2004-11-01 | Kunal | 16h |
| 199 | 1.6.6.3.2 | Junit Test Development |  | 4d | 2005-10-28 | 2005-11-02 | 198 | 0d |  | start no earlier than 2005-07-15 | Kunal | 32h |
| 200 | 1.6.6.3.3 | Code Development + Unit Testing |  | 23d | 2005-11-03 | 2005-12-05 | 199 | 0d |  | start no earlier than 2004-11-08 | Kunal | 184h |
| 201 | 1.6.6.3.4 | Code Reviews |  | 2d | 2005-12-02 | 2005-12-05 | 200FS-2d | 0d |  | finish no earlier than 2004-11-15 | Charles | 16h |
| 202 | 1.6.6.3.5 | Promote to QA | milestone | 0d | 2005-12-05 | 2005-12-05 | 201 | 0d |  |  |  |  |
| 203 | 1.6.6.4 | **Integration Testing** |  | 7d | 2005-12-06 | 2005-12-14 |  | 0d |  |  |  | 120h |
| 204 | 1.6.6.4.1 | QA Testing |  | 6d | 2005-12-06 | 2005-12-13 | 197 | 26d |  |  | Eric | 48h |
| 205 | 1.6.6.4.2 | Bug Fixes |  | 6d | 2005-12-06 | 2005-12-13 | 197 | 0d |  |  | Kunal | 48h |
| 206 | 1.6.6.4.3 | Evaluate Results & Consolidate Documents/ Design |  | 1d | 2005-12-14 | 2005-12-14 | 205 | 0d |  | start no earlier than 2004-11-16 | Eric; Vinay; Kunal | 24h |
| 207 | 1.6.6.5 | Iteration Complete | milestone | 0d | 2005-12-14 | 2005-12-14 | 203 | 0d |  | start no earlier than 2005-08-05 |  |  |
| 208 | 1.6.7 | **Iteration - Message Level Security** |  | 39d | 2005-10-03 | 2005-11-24 |  | 0d |  |  |  | 448h |
| 209 | 1.6.7.1 | Detailed Iteration Plan |  | 1d | 2005-10-03 | 2005-10-03 | 163 | 0d |  | start no earlier than 2004-10-26 | Vinay | 8h |
| 210 | 1.6.7.2 | **Design** |  | 9d | 2005-10-04 | 2005-10-14 |  | 0d |  |  |  | 120h |
| 211 | 1.6.7.2.1 | Level 3 - 4 Use Cases |  | 3d | 2005-10-04 | 2005-10-06 | 209 | 0d |  | start no earlier than 2004-10-27 | Vinay | 24h |
| 212 | 1.6.7.2.2 | Use Case Model |  | 1d | 2005-10-07 | 2005-10-07 | 211 | 0d |  | start no earlier than 2004-10-27 | Vinay | 8h |
| 213 | 1.6.7.2.3 | UML Sequence Diagram |  | 1d | 2005-10-10 | 2005-10-10 | 212 | 38.5d | 0d |  | Vinay | 8h |
| 214 | 1.6.7.2.4 | UML Activity Diagram |  | 1d | 2005-10-10 | 2005-10-10 | 212 | 0d |  | start no earlier than 2004-10-29 | Vinay | 8h |
| 215 | 1.6.7.2.5 | UML Class Diagram |  | 3d | 2005-10-11 | 2005-10-13 | 214 | 0d |  |  | Vinay | 24h |
| 216 | 1.6.7.2.6 | Design Review |  | 1d | 2005-10-14 | 2005-10-14 | 215 | 0d |  |  | Charles | 8h |
| 217 | 1.6.7.2.7 | Test Case Development |  | 5d | 2005-10-10 | 2005-10-14 | 212 | 68d |  |  | Eric | 40h |

| ID | WBS | Task | Type | Duration | Start | Finish | Predecessors | Total slack | Free slack | Constraint | Resources | Work |
| --- | --- | --- | --- | --- | --- | --- | --- | --- | --- | --- | --- | --- |
| 218 | 1.6.7.3 | **Implementation** |  | 28d | 2005-10-11 | 2005-11-17 |  | 38.5d | 0d |  |  | 240h |
| 219 | 1.6.7.3.1 | Environment Setup |  | 2d | 2005-10-11 | 2005-10-12 | 213 | 38.5d | 0d | start no earlier than 2004-11-01 | Vinay | 16h |
| 220 | 1.6.7.3.2 | Junit Test Development |  | 3d | 2005-10-13 | 2005-10-17 | 219 | 38.5d | 0d | start no earlier than 2005-07-15 | Vinay | 24h |
| 221 | 1.6.7.3.3 | Code Development + Unit Testing |  | 23d | 2005-10-18 | 2005-11-17 | 220 | 38.5d | 0d | start no earlier than 2004-11-08 | Vinay | 184h |
| 222 | 1.6.7.3.4 | Code Reviews |  | 2d | 2005-11-16 | 2005-11-17 | 221FS-2d | 38.5d | 0d | finish no earlier than 2004-11-15 | Charles | 16h |
| 223 | 1.6.7.3.5 | Promote to QA | milestone | 0d | 2005-11-17 | 2005-11-17 | 222 | 38.5d |  |  |  |  |
| 224 | 1.6.7.4 | **Integration Testing** |  | 5d | 2005-11-18 | 2005-11-24 |  | 14d | 0d |  |  | 80h |
| 225 | 1.6.7.4.1 | QA Testing |  | 4d | 2005-11-18 | 2005-11-23 | 218 | 40d |  |  | Eric | 32h |
| 226 | 1.6.7.4.2 | Bug Fixes |  | 4d | 2005-11-18 | 2005-11-23 | 218 | 38.5d | 0d |  | Vinay | 32h |
| 227 | 1.6.7.4.3 | Evaluate Results & Consolidate Documents/ Design |  | 1d | 2005-11-24 | 2005-11-24 | 226 | 14d |  | start no earlier than 2004-11-16 | Eric; Vinay | 16h |
| 228 | 1.6.7.5 | Iteration Complete | milestone | 0d | 2005-11-24 | 2005-11-24 | 224 | 39d |  | start no earlier than 2005-08-05 |  |  |
| 229 | 1.7 | **Transition** |  | 23d | 2005-12-14 | 2006-01-16 | 81 | 0d |  |  |  | 657.6h |
| 230 | 1.7.1 | **Iteration I** |  | 18d | 2005-12-14 | 2006-01-09 |  | 0d |  |  |  | 617.6h |
| 231 | 1.7.1.1 | **QA Testing** |  | 12d | 2005-12-15 | 2005-12-30 |  | 6d |  |  |  | 112h |
| 232 | 1.7.1.1.1 | Setup of Environment |  | 2d | 2005-12-15 | 2005-12-16 |  | 6d | 0d |  | Kunal; Vinay | 32h |
| 233 | 1.7.1.1.2 | Regression Testing |  | 10d | 2005-12-19 | 2005-12-30 | 232 | 6d |  |  | Eric | 80h |
| 234 | 1.7.1.1.3 | Bug Fixes |  | 3d | 2005-12-15 | 2005-12-19 |  | 15d |  | finish no earlier than 2005-11-15 |  |  |
| 235 | 1.7.1.2 | **Documentation** |  | 18d | 2005-12-15 | 2006-01-09 |  | 0d |  |  |  | 505.6h |
| 236 | 1.7.1.2.1 | Application Developers Guide Document |  | 15d | 2005-12-15 | 2006-01-04 |  | 0d |  | finish no earlier than 2005-02-04 | Kunal; Eric; Vinay | 360h |
| 237 | 1.7.1.2.2 | Java Docs |  | 4d | 2005-12-15 | 2005-12-20 | 81 | 14d |  | start no earlier than 2005-01-24 | Kunal; Vinay | 41.6h |
| 238 | 1.7.1.2.3 | UPT User Guide Updation |  | 10d | 2005-12-15 | 2005-12-28 | 81 | 8d |  | start no earlier than 2005-02-07 | Eric | 80h |
| 239 | 1.7.1.2.4 | caCore Technical Guide Modifications |  | 2d | 2006-01-05 | 2006-01-06 | 236 | 0d |  | finish no earlier than 2005-02-14 | Eric | 16h |
| 240 | 1.7.1.2.5 | Release Notes |  | 1d | 2006-01-09 | 2006-01-09 | 239 | 0d |  |  | Eric | 8h |
| 241 | 1.7.1.3 | Iteration I Complete | milestone | 0d | 2005-12-14 | 2005-12-14 |  | 0d |  | start no earlier than 2005-02-15 |  |  |

| ID | WBS | Task | Type | Duration | Start | Finish | Predecessors | Total slack | Constraint | Resources | Work |
| --- | --- | --- | --- | --- | --- | --- | --- | --- | --- | --- | --- |
| 242 | 1.7.2 | **Iteration II** |  | 4d | 2006-01-09 | 2006-01-13 | 230 | 0d |  |  | 40h |
| 243 | 1.7.2.1 | **Staging Environment Testing** |  | 4d | 2006-01-10 | 2006-01-13 |  | 0d |  |  | 40h |
| 244 | 1.7.2.1.1 | Setup of Environment |  | 1d | 2006-01-10 | 2006-01-10 |  | 0d |  | Kunal; Vinay | 16h |
| 245 | 1.7.2.1.2 | Regression Testing |  | 3d | 2006-01-11 | 2006-01-13 | 244 | 0d |  | Eric | 24h |
| 246 | 1.7.2.1.3 | Bug Fixes |  | 1d | 2006-01-10 | 2006-01-10 |  | 3d | finish no earlier than 2005-11-15 |  |  |
| 247 | 1.7.2.2 | Iteration II Complete | milestone | 0d | 2006-01-09 | 2006-01-09 |  | 0d | start no earlier than 2005-02-28 |  |  |
| 248 | 1.7.3 | **Release** |  | 1d | 2006-01-16 | 2006-01-16 | 242 | 0d |  |  |  |
| 249 | 1.7.3.1 | Tag into the CVS & Release |  | 1d | 2006-01-16 | 2006-01-16 |  | 0d | start no earlier than 2005-03-07 |  |  |
